# 福莱特自研MES项目-南通推广

Schedule from a web Gantt chart, 2026-11-16 to 2027-01-22.
Saturdays and Sundays are off

## Schedule

| ID | WBS | Task | Duration | Start | Finish | Predecessors | Status |
| --- | --- | --- | --- | --- | --- | --- | --- |
| 2 | 1 | 项目启动会 | 1d | 2026-11-20 | 2026-11-20 |  | waiting |
| 3 | 2 | **培训** | 10d | 2026-11-16 | 2026-11-27 |  | waiting |
| 4 | 2.1 | 培训材料编写 | 5d | 2026-11-16 | 2026-11-20 |  | waiting |
| 5 | 2.2 | 系统培训 | 5d | 2026-11-23 | 2026-11-27 |  | waiting |
| 6 | 3 | **系统试运行** | 20d | 2026-11-16 | 2026-12-11 |  | waiting |
| 7 | 3.1 | 现场设备硬件确认 | 5d | 2026-11-23 | 2026-11-27 |  | waiting |
| 8 | 3.2 | 试运行环境搭建 | 5d | 2026-11-16 | 2026-11-20 |  | waiting |
| 9 | 3.3 | 试运行数据准备 | 10d | 2026-11-16 | 2026-11-27 |  | waiting |
| 10 | 3.4 | 系统试运行 | 10d | 2026-11-30 | 2026-12-11 |  | waiting |
| 11 | 3.5 | 功能优化 | 10d | 2026-11-30 | 2026-12-11 |  | waiting |
| 12 | 4 | **系统上线** | 40d | 2026-11-30 | 2027-01-22 |  | waiting |
| 13 | 4.1 | 正式环境部署 | 5d | 2026-11-30 | 2026-12-04 |  | waiting |
| 14 | 4.2 | 正式环境数据准备 | 5d | 2026-12-07 | 2026-12-11 | 13 | waiting |
| 15 | 4.3 | 正式上线 | 15d | 2026-12-14 | 2027-01-01 |  | waiting |
| 16 | 4.4 | 验收签字 | 15d | 2027-01-04 | 2027-01-22 | 15 | waiting |
